How a schedule from MS Project changed from version to version. A marks actual dates.

## Version 1 (saved 2018-05-21)

Note of the change: xx

| ID | WBS | Task | Duration | Start | Finish | Complete | Total float |
| --- | --- | --- | --- | --- | --- | --- | --- |
| 1 | 1 | **开发** | 24d | 2018-05-07 A | 2018-06-07 | 41% | 0d |
| 2 | 1.1 | **SSO** | 23d | 2018-05-08 A | 2018-06-07 | 23% | 0d |
| 3 |  | SSO 配置页面 | 2d | 2018-05-08 A | 2018-05-09 A | 100% |  |
| 4 |  | 搭建SAML 和JWT Server | 1d | 2018-05-10 A | 2018-05-10 A | 100% |  |
| 5 |  | 方案设计 | 2d | 2018-05-08 A | 2018-05-09 | 50% |  |
| 6 |  | 新登录界面的开发 | 2d | 2018-05-10 A | 2018-05-11 | 50% |  |
| 7 |  | Portal 登录 | 2d | 2018-05-14 A | 2018-05-15 | 50% |  |
| 8 |  | Secure登录 | 3d | 2018-05-16 | 2018-05-18 |  |  |
| 9 |  | Agent Console 网页版 | 1d | 2018-05-21 | 2018-05-21 |  |  |
| 10 |  | Agent Console 桌面版 | 2d | 2018-05-22 | 2018-05-23 |  |  |
| 11 |  | 联调+自测 | 2d | 2018-05-24 | 2018-05-25 |  |  |
| 12 |  | Partner SSO 登录 | 2d | 2018-06-06 | 2018-06-07 |  |  |
| 13 |  | 配置页面挪到Account | 2d | 2018-05-29 | 2018-05-30 |  |  |
| 14 | 1.1.12 | **SSO 手机开发** | 4d | 2018-05-25 | 2018-05-30 |  | 0d |
| 15 |  | 基本方案确定+环境准备 | 2d | 2018-05-25 | 2018-05-28 |  |  |
| 16 |  | IOS | 1d | 2018-05-28 | 2018-05-28 |  |  |
| 17 |  | Andriod | 1d | 2018-05-29 | 2018-05-29 |  |  |
| 18 |  | Code reivew + 自测 | 1d | 2018-05-30 | 2018-05-30 |  |  |
| 19 | 1.2 | **API 接口** | 21d | 2018-05-07 A | 2018-06-04 | 65% | 0d |
| 20 | 1.2.1 | **LiveChat API** | 19d | 2018-05-07 A | 2018-05-31 | 75% | 0d |
| 21 |  | Department | 2d | 2018-05-07 A | 2018-05-08 A | 100% |  |
| 22 |  | Agent | 2d | 2018-05-07 A | 2018-05-08 A | 100% |  |
| 23 |  | Canned Message | 1d | 2018-05-09 A | 2018-05-09 A | 100% |  |
| 24 |  | Canned Message Category | 1d | 2018-05-09 A | 2018-05-09 A | 100% |  |
| 25 |  | Auto Allocation | 1d | 2018-05-09 | 2018-05-09 |  |  |
| 26 |  | Custom Away Status | 1d | 2018-05-09 | 2018-05-09 |  |  |
| 27 |  | Conversion | 1d | 2018-05-10 A | 2018-05-10 A | 100% |  |
| 28 |  | Visitor Segmentation | 1d | 2018-05-10 A | 2018-05-10 A | 100% |  |
| 29 |  | Visitor SSO Settings | 1d | 2018-05-10 A | 2018-05-10 A | 100% |  |
| 30 |  | Site Config | 1d | 2018-05-31 | 2018-05-31 |  |  |
| 31 |  | ban | 1d | 2018-05-18 A | 2018-05-18 A | 100% |  |
| 32 |  | Campaign | 2d | 2018-05-21 A | 2018-05-22 A | 100% |  |
| 33 |  | ban + Campaign 自测 | 1d | 2018-05-23 | 2018-05-23 |  |  |
| 34 | 1.2.2 | **Account API** | 17d | 2018-05-11 A | 2018-06-04 | 29% | 0d |
| 35 |  | Site Profile | 1d | 2018-05-31 | 2018-05-31 |  |  |
| 36 |  | Group | 1d | 2018-05-31 | 2018-05-31 |  |  |
| 37 |  | Permission | 1d | 2018-06-04 | 2018-06-04 |  |  |
| 38 |  | Agent Permission | 1d | 2018-06-04 | 2018-06-04 |  |  |
| 39 |  | Group Permission | 1d | 2018-06-04 | 2018-06-04 |  |  |
| 40 |  | Ip Restriction | 1d | 2018-05-11 A | 2018-05-11 A | 100% |  |
| 41 |  | Audit Log | 1d | 2018-05-11 A | 2018-05-11 A | 100% |  |
| 42 | 1.2.3 | **Old API 迁移** | 5d | 2018-05-14 A | 2018-05-18 A | 100% |  |
| 43 |  | Chats | 1d | 2018-05-14 A | 2018-05-14 A | 100% |  |
| 44 |  | Offline Messages | 1d | 2018-05-14 A | 2018-05-14 A | 100% |  |
| 45 |  | Visitors | 1d | 2018-05-14 A | 2018-05-14 A | 100% |  |
| 46 |  | Custom Variables | 1d | 2018-05-14 A | 2018-05-14 A | 100% |  |
| 47 |  | Site status | 1d | 2018-05-14 A | 2018-05-14 A | 100% |  |
| 48 |  | Conversions | 1d | 2018-05-14 A | 2018-05-14 A | 100% |  |
| 49 |  | API 第一批次的Code Review + 代码修改 | 2d | 2018-05-15 A | 2018-05-16 A | 100% |  |
| 50 |  | API 第一批次的自测 +互测 | 2d | 2018-05-17 A | 2018-05-18 A | 100% |  |
| 51 | 1.2.4 | **Partner API** | 3d | 2018-05-21 | 2018-05-23 |  | 0d |
| 52 |  | Add Site | 2d | 2018-05-21 | 2018-05-22 |  |  |
| 53 |  | Get Site | 1d | 2018-05-23 | 2018-05-23 |  |  |
| 54 |  | Update site | 1d | 2018-05-23 | 2018-05-23 |  |  |
| 55 |  | Paying | 1d | 2018-05-23 | 2018-05-23 |  |  |
| 56 | 1.2.5 | **框架基础层** | 15d | 2018-05-07 A | 2018-05-25 | 71% | 0d |
| 57 | 1.2.5.1 | **权限认证** | 15d | 2018-05-07 A | 2018-05-25 A | 100% |  |
| 58 |  | Oauth 设计 | 1d | 2018-05-07 A | 2018-05-07 A | 100% |  |
| 59 |  | Oauth 设计评审与修改 | 1d | 2018-05-08 A | 2018-05-08 A | 100% |  |
| 60 |  | Oauth Server 校验用户身份 | 2d | 2018-05-09 A | 2018-05-10 A | 100% |  |
| 61 |  | Code \token 生成以及处理逻辑 | 2d | 2018-05-07 A | 2018-05-08 A | 100% |  |
| 62 |  | 授权End point | 1d | 2018-05-07 A | 2018-05-07 A | 100% |  |
| 63 |  | Oauth Server code review + 问题修改 | 1d | 2018-05-24 A | 2018-05-24 A | 100% |  |
| 64 |  | Oauth Server 自测 | 1d | 2018-05-25 A | 2018-05-25 A | 100% |  |
| 65 | 1.2.5.2 | **API 限流** | 8d | 2018-05-16 A | 2018-05-25 | 38% | 0d |
| 66 |  | 方案设计 | 1d | 2018-05-16 A | 2018-05-16 A | 100% |  |
| 67 |  | 方案验证 | 2d | 2018-05-17 A | 2018-05-18 A | 100% |  |
| 68 |  | 验证完以后重新讨论方案 | 1d | 2018-05-21 | 2018-05-21 |  |  |
| 69 |  | 开发 | 2d | 2018-05-22 | 2018-05-23 |  |  |
| 70 |  | Code Review+自测 | 2d | 2018-05-24 | 2018-05-25 |  |  |

| ID | WBS | Task | Duration | Start | Finish | Total float |
| --- | --- | --- | --- | --- | --- | --- |
| 71 | 1.3 | **Partner 管理系统** | 8d | 2018-05-21 | 2018-05-30 | 0d |
| 72 |  | 基本设计 | 1d | 2018-05-21 | 2018-05-21 |  |
| 73 |  | 基本框架搭建 | 1d | 2018-05-22 | 2018-05-22 |  |
| 74 |  | 登录 + 权限 | 1d | 2018-05-23 | 2018-05-23 |  |
| 75 |  | partner profile | 1d | 2018-05-24 | 2018-05-24 |  |
| 76 |  | Rebranding | 1d | 2018-05-25 | 2018-05-25 |  |
| 77 |  | Security | 1d | 2018-05-28 | 2018-05-28 |  |
| 78 |  | SSO | 1d | 2018-05-24 | 2018-05-24 |  |
| 79 |  | Site Management | 2d | 2018-05-25 | 2018-05-28 |  |
| 80 |  | Code Review+代码修改 | 1d | 2018-05-29 | 2018-05-29 |  |
| 81 |  | 代码互测+修改 | 1d | 2018-05-30 | 2018-05-30 |  |
| 82 |  | UI Integration | 1d | 2018-05-24 | 2018-05-24 |  |
| 83 | 1.5 | **CSS & Branding** | 1d | 2018-05-28 | 2018-05-28 | 0d |
| 84 |  | 先看代码了解原来的方案 | 1d | 2018-05-28 | 2018-05-28 |  |
| 85 |  | CSS | 1d? | 2018-05-28 | 2018-05-28 |  |
| 86 |  | Branding | 1d? | 2018-05-28 | 2018-05-28 |  |
| 87 | 1.6 | **Agent Console SDK** | 7d | 2018-05-28 | 2018-06-05 | 0d |
| 88 |  | 方案设计+评审确认 | 1d | 2018-05-28 | 2018-05-28 |  |
| 89 |  | Agent Console 相关修改 | 1d | 2018-05-29 | 2018-05-29 |  |
| 90 |  | 初始化+General | 1d | 2018-05-30 | 2018-05-30 |  |
| 91 |  | Agent | 1d | 2018-05-31 | 2018-05-31 |  |
| 92 |  | Visitor | 1d | 2018-06-01 | 2018-06-01 |  |
| 93 |  | Chat | 1d | 2018-06-04 | 2018-06-04 |  |
| 94 |  | Code Review + 修改 | 1d | 2018-06-05 | 2018-06-05 |  |
| 95 |  | 测试 | 1d? | 2018-04-26 | 2018-04-26 |  |
| 96 |  | Alpha | 1d? | 2018-04-26 | 2018-04-26 |  |
| 97 |  | Beta | 1d? | 2018-04-26 | 2018-04-26 |  |
| 98 |  | RC 测试 | 1d? | 2018-04-26 | 2018-04-26 |  |

## Version 2 (saved 2018-05-21)

Note of the change: xxxx

Last finish 2018-06-07 → 2018-07-03 (+26d).

Added:

| ID | Task | Duration | Start | Finish | Constraint | Resources |
| --- | --- | --- | --- | --- | --- | --- |
| 82 | Add Partner | 1d? | 2018-05-21 | 2018-05-21 |  |  |
| 98 | **SSO** | 3d | 2018-06-04 | 2018-06-06 |  |  |
| 99 | 配置页面 | 1d | 2018-06-04 | 2018-06-04 |  | Michael |
| 100 | Security+Portal 登录+网页版Agent Console | 1d | 2018-06-05 | 2018-06-05 |  | Michael |
| 101 | Agent Console 桌面版+手机版 | 1d | 2018-06-06 | 2018-06-06 |  | Michael |
| 102 | CSS & Branding | 1d | 2018-06-07 | 2018-06-07 |  | Michael |
| 103 | **API 接口** | 3d | 2018-06-04 | 2018-06-06 |  |  |
| 104 | Partner API | 1d | 2018-06-04 | 2018-06-04 |  | Joe |
| 105 | Account API | 1d | 2018-06-05 | 2018-06-05 |  | Roger |
| 106 | LiveChat API | 1d | 2018-06-06 | 2018-06-06 |  | Joe; Roger |
| 107 | **API 接口框架** | 2d | 2018-06-04 | 2018-06-05 |  |  |
| 108 | Oauth | 1d | 2018-06-04 | 2018-06-04 |  | Roger |
| 109 | 限流 | 1d | 2018-06-05 | 2018-06-05 |  | Joe |
| 110 | UI Integration | 1d | 2018-06-07 | 2018-06-07 | start no earlier than 2018-06-07 | Joe |
| 111 | Agent Console SDK | 2d | 2018-06-07 | 2018-06-08 |  | Roger |
| 112 | Partner 管理系统 | 1d | 2018-06-08 | 2018-06-08 |  | Joe; Michael |
| 113 | 问题修复完+验证 | 2d | 2018-06-11 | 2018-06-12 |  |  |
| 114 | 缓冲 | 1d | 2018-06-13 | 2018-06-13 |  |  |
| 116 | SSO | 1d? | 2018-06-14 | 2018-06-14 |  |  |
| 117 | API 基础框架 | 1d? | 2018-06-14 | 2018-06-14 |  |  |
| 118 | Add Site, Agent 等几个重要接口 | 1d? | 2018-06-14 | 2018-06-14 |  |  |
| 119 | Agent Console 基本功能 | 1d? | 2018-06-14 | 2018-06-14 |  |  |
| 120 | 集成测试 | 6d | 2018-06-22 | 2018-06-29 |  |  |

Changed:

| ID | Task | Start | Finish | Duration | Complete | Total float | Other |
| --- | --- | --- | --- | --- | --- | --- | --- |
| 1 | **开发** |  |  |  | 41% → 40% |  |  |
| 96 | **测试** | 2018-04-26 → 2018-06-04 (+39d) | 2018-04-26 → 2018-06-29 (+64d) | 1d? → 20d |  | none → 0d |  |
| 97 | **第一轮** | 2018-04-26 → 2018-06-04 (+39d) | 2018-04-26 → 2018-06-07 (+42d) | 1d? → 4d |  | none → 0d | was named Alpha |
| 115 | **第二轮** | 2018-04-26 → 2018-06-14 (+49d) | 2018-04-26 → 2018-06-21 (+56d) | 1d? → 6d |  |  | was named Beta |
| 121 | RC 测试 | 2018-04-26 → 2018-07-02 (+67d) | 2018-04-26 → 2018-07-03 (+68d) | 1d? → 2d |  |  |  |

## Version 3 (saved 2018-05-23)

Note of the change: new version

Last finish stays 2018-07-03.

Added:

| ID | Task | Duration | Start | Finish | Resources |
| --- | --- | --- | --- | --- | --- |
| 14 | Logout | 1d | 2018-05-08 | 2018-05-08 | Damon |

Changed:

| ID | Task | Complete |
| --- | --- | --- |
| 2 | **SSO** | 23% → 22% |

## Version 4 (saved 2018-05-25)

Note of the change: xxx

Last finish stays 2018-07-03. Complete tasks 30 → 39.

Changed:

| ID | Task | Start | Finish | Complete |
| --- | --- | --- | --- | --- |
| 1 | **开发** |  |  | 40% → 53% |
| 2 | **SSO** |  |  | 22% → 52% |
| 5 | 方案设计 |  | 2018-05-09 A | 50% → 100% |
| 6 | 新登录界面的开发 |  | 2018-05-11 A | 50% → 100% |
| 7 | Portal 登录 |  | 2018-05-15 A | 50% → 100% |
| 8 | Secure登录 | 2018-05-16 A | 2018-05-18 A | 0% → 100% |
| 13 | 配置页面挪到Account | 2018-05-29 A | 2018-05-30 A | 0% → 100% |
| 20 | **API 接口** |  |  | 65% → 72% |
| 21 | **LiveChat API** |  |  | 75% → 69% |
| 33 | Campaign |  | 2018-05-22 A → 2018-05-22 | 100% → 50% |
| 52 | **Partner API** | 2018-05-21 A |  | 0% → 90% |
| 53 | Add Site | 2018-05-21 A | 2018-05-22 A | 0% → 100% |
| 54 | Get Site | 2018-05-23 A | 2018-05-23 A | 0% → 100% |
| 55 | Update site | 2018-05-23 A | 2018-05-23 A | 0% → 100% |
| 56 | Paying | 2018-05-23 A |  | 0% → 50% |
| 72 | **Partner 管理系统** | 2018-05-21 A |  | 0% → 8% |
| 73 | 基本设计 | 2018-05-21 A | 2018-05-21 A | 0% → 100% |
| 84 | UI Integration | 2018-05-24 A | 2018-05-24 A | 0% → 100% |

## Version 5 (saved 2018-05-28)

Note of the change: xxxx

Last finish stays 2018-07-03. Complete tasks 39 → 40.

Changed:

| ID | Task | Start | Finish | Duration | Complete |
| --- | --- | --- | --- | --- | --- |
| 1 | **开发** |  |  |  | 53% → 55% |
| 72 | **Partner 管理系统** |  |  |  | 8% → 23% |
| 74 | 基本框架搭建 | 2018-05-22 A | 2018-05-22 A |  | 0% → 100% |
| 75 | 登录 + 权限 | 2018-05-23 A |  |  | 0% → 80% |
| 98 | **第一轮** |  | 2018-06-07 → 2018-06-13 (+6d) | 4d → 8d |  |

## Version 6 (saved 2018-05-29)

Note of the change: 信息

Last finish stays 2018-07-03.

Changed:

| ID | Task | Finish | Duration |
| --- | --- | --- | --- |
| 108 | **API 接口框架** | 2018-06-05 → 2018-06-07 (+2d) | 2d → 4d |

## Version 7 (saved 2018-06-06)

Note of the change: Merge branch 'master' of https://github.com/HJ8905/MyDocument

Last finish stays 2018-07-03. Complete tasks 40 → 46.

Changed:

| ID | Task | Start | Finish | Complete |
| --- | --- | --- | --- | --- |
| 1 | **开发** |  |  | 55% → 60% |
| 72 | **Partner 管理系统** |  |  | 23% → 58% |
| 75 | 登录 + 权限 |  | 2018-05-23 A | 80% → 100% |
| 76 | partner profile | 2018-05-24 A | 2018-05-24 A | 0% → 100% |
| 77 | Rebranding | 2018-05-25 A | 2018-05-25 A | 0% → 100% |
| 78 | Security | 2018-05-28 A | 2018-05-28 A | 0% → 100% |
| 79 | SSO | 2018-05-24 A | 2018-05-24 A | 0% → 100% |
| 85 | **CSS & Branding** | 2018-05-28 A |  | 0% → 33% |
| 86 | 先看代码了解原来的方案 | 2018-05-28 A | 2018-05-28 A | 0% → 100% |
